# 2

Schedule from MS Project, 2022-01-03 to 2023-10-18, status date 2022-05-09, 7.5 hours a day, costs in €, A marks actual dates.

## Calendars

- Mi calendario: Mon-Fri 09:00-16:30; Sat-Sun off. Exceptions (off unless hours are given): 2022-03-19 (San José), 2022-10-09 (9 de Octubre), 2022-11-01 (1 de Noviembre), 2022-12-25 (Navidad).

## Resources

| Resource | Group | Rate |
| --- | --- | --- |
| Andrea Gascó Pau | Gerente del proyecto | 30 |
| Sergio García Gascó | Analista-jefe | 20 |
| Mireia Pires State | Coordinadora de desarrolladores | 20 |
| Iñaki Diez Lambies | Supervisor de calidad | 20 |
| Servidor | Material informático | 5000 |
| Equipos informáticos | Material informático | 10000 |
| Mobiliario de oficina | Material de oficina | 2000 |
| Viajes | Reuniones |  |
| Comidas | Reuniones |  |
| Alquiler del local | Localización | 10 |
| Analistas | Analistas | 12 |
| Desarrolladores | Desarrolladores | 12 |
| Testers | Testers | 12 |
| Diseñadores | Diseñadores | 12 |

## Schedule

| ID | WBS | Task | Duration | Start | Finish | Predecessors | Complete | Remaining | Baseline start | Baseline finish | Baseline duration | Total slack | Free slack | Resources | Work | Actual work | Cost | Baseline cost | Actual cost |
| --- | --- | --- | --- | --- | --- | --- | --- | --- | --- | --- | --- | --- | --- | --- | --- | --- | --- | --- | --- |
| 1 | 1 | **Proyecto** | 466.23d | 2022-01-03 A | 2023-10-18 |  | 12% | 408.48d | 2022-01-03 | 2023-02-08 | 286.33d | 0d |  |  | 5096.73h | 848.25h | 406,428.7 | 396,860 | 22,844.75 |
| 2 | 1.1 | **Fase de Análisis** | 239.33d | 2022-01-03 A | 2022-12-05 |  | 23% | 184.88d | 2022-01-03 | 2022-12-05 | 239.33d | 0d |  |  | 3357h | 848.25h | 77,892 | 77,892 | 22,844.75 |
| 3 | 1.1.1 | **Elicitación de requisitos** | 48d | 2022-01-03 A | 2022-03-09 A |  | 100% |  | 2022-01-03 | 2022-03-09 | 48d |  |  |  | 720h | 720h | 18,000 | 18,000 | 18,000 |
| 4 | 1.1.1.1 | Entrevistas | 48d | 2022-01-03 A | 2022-03-09 A |  | 100% |  | 2022-01-03 | 2022-03-09 | 48d |  |  | Andrea Gascó Pau; Viajes [0.1%]; Comidas [0.1%]; Sergio García Gascó | 720h | 720h | 18,000 | 18,000 | 18,000 |
| 5 | 1.1.2 | **Análisis de requisitos** | 191.33d | 2022-03-10 A | 2022-12-05 |  | 3% | 184.68d | 2022-03-10 | 2022-12-05 | 191.33d | 0d |  |  | 2637h | 128.25h | 59,892 | 59,892 | 4,844.75 |
| 6 | 1.1.2.1 | Informe de análisis | 26.73d | 2022-03-10 A | 2022-04-20 | 4 | 25% | 20.05d | 2022-03-10 | 2022-04-20 | 26.73d | 0.47d | 0d | Andrea Gascó Pau; Analistas; Mobiliario de oficina; Sergio García Gascó; Alquiler del local | 416h | 128.25h | 10,570 | 10,570 | 4,844.75 |
| 7 | 1.1.2.2 | Prototipos móvil | 61.87d | 2022-04-20 | 2022-08-22 | 6 |  |  | 2022-04-20 | 2022-08-22 | 61.87d | 0.47d | 0d | Andrea Gascó Pau; Mobiliario de oficina; Sergio García Gascó; Alquiler del local; Diseñadores | 832h |  | 18,234 | 18,234 |  |
| 8 | 1.1.2.3 | Prototipos tablet | 51.87d | 2022-08-22 | 2022-12-05 | 7 |  |  | 2022-08-22 | 2022-12-05 | 51.87d | 0d |  | Andrea Gascó Pau; Mobiliario de oficina; Sergio García Gascó; Alquiler del local; Diseñadores | 694.5h |  | 15,544 | 15,544 |  |
| 9 | 1.1.2.4 | Prototipos web | 51.87d | 2022-08-22 | 2022-12-05 | 7 |  |  | 2022-08-22 | 2022-12-05 | 51.87d | 0d |  | Andrea Gascó Pau; Mobiliario de oficina; Sergio García Gascó; Alquiler del local; Diseñadores | 694.5h |  | 15,544 | 15,544 |  |
| 10 | 1.2 | **Fase de Diseño** | 60.97d | 2022-12-05 | 2023-02-28 |  |  |  | 2022-12-05 | 2022-12-21 | 12d | 0d |  |  | 659h |  | 92,874 | 88,902 |  |
| 11 | 1.2.1 | **Capa de presentación** | 60.97d | 2022-12-05 | 2023-02-28 |  |  |  | 2022-12-05 | 2022-12-21 | 12d | 0d |  |  | 337.5h |  | 40,080 | 36,894 |  |
| 12 | 1.2.1.1 | Diseñar interfaz móvil | 4w | 2022-12-05 | 2023-01-26 | 7, 8, 9 |  |  | 2022-12-05 | 2022-12-13 | 3.2d | 0d |  | Diseñadores; Alquiler del local; Equipos informáticos; Mobiliario de oficina | 150h |  | 13,810 | 12,298 |  |
| 13 | 1.2.1.2 | Diseñar interfaz tablet | 2.5w | 2023-01-26 | 2023-02-28 | 12 |  |  | 2022-12-13 | 2022-12-21 | 3.2d | 9.3d | 0d | Diseñadores; Alquiler del local; Equipos informáticos; Mobiliario de oficina | 93.75h |  | 13,135 | 12,298 |  |
| 14 | 1.2.1.3 | Diseñar interfaz página web | 2.5w | 2023-01-26 | 2023-02-28 | 12 |  |  | 2022-12-13 | 2022-12-21 | 3.2d | 0d |  | Diseñadores; Alquiler del local; Equipos informáticos; Mobiliario de oficina | 93.75h |  | 13,135 | 12,298 |  |
| 15 | 1.2.2 | **Capa de lógica** | 14.07d | 2022-12-05 | 2022-12-23 |  |  |  | 2022-12-05 | 2022-12-19 | 10d | 54.67d |  |  | 134h |  | 25,948 | 25,684 |  |
| 16 | 1.2.2.1 | Diseñar aquitectura web | 2w | 2022-12-05 | 2022-12-23 | 8, 9 |  |  | 2022-12-05 | 2022-12-19 | 7.8d | 54.67d | 0d | Sergio García Gascó; Analistas; Alquiler del local; Equipos informáticos; Mobiliario de oficina | 96.5h |  | 13,488 | 13,290 |  |
| 17 | 1.2.2.2 | Comunicación capa persistencia | 1w | 2022-12-05 | 2022-12-16 | 8, 9 |  |  | 2022-12-05 | 2022-12-15 | 4.27d | 59.07d | 4.87d | Analistas; Alquiler del local; Equipos informáticos; Mobiliario de oficina | 37.5h |  | 12,460 | 12,394 |  |
| 18 | 1.2.3 | **Capa de persistencia** | 18.93d | 2022-12-05 | 2022-12-30 |  |  |  | 2022-12-05 | 2022-12-19 | 10d | 49.8d |  |  | 187.5h |  | 26,846 | 26,324 |  |
| 19 | 1.2.3.1 | Tablas y relaciones | 7.8d | 2022-12-05 | 2022-12-19 | 8, 9 |  |  | 2022-12-05 | 2022-12-19 | 7.8d | 12d | 0d | Sergio García Gascó; Analistas; Alquiler del local; Equipos informáticos; Mobiliario de oficina | 80h |  | 13,290 | 13,290 |  |
| 20 | 1.2.3.2 | Diseño de bases de datos | 2.4w | 2022-12-05 | 2022-12-30 | 8, 9 |  |  | 2022-12-05 | 2022-12-15 | 6.2d | 49.8d | 0d | Analistas; Sergio García Gascó; Alquiler del local; Equipos informáticos; Mobiliario de oficina | 107.5h |  | 13,556 | 13,034 |  |
| 21 | 1.3 | **Fase de Codificación** | 80.2d | 2022-12-23 | 2023-04-14 |  |  |  | 2022-12-13 | 2023-01-12 | 22.53d | 35.73d |  |  | 818.25h |  | 96,581 | 91,494 |  |
| 22 | 1.3.1 | **Capa presentacion** | 48d | 2023-01-26 | 2023-04-04 |  |  |  | 2022-12-13 | 2023-01-02 | 14d | 0d |  |  | 478.25h |  | 43,181 | 39,102 |  |
| 23 | 1.3.1.1 | Interfaz móvil | 1mo | 2023-01-26 | 2023-03-16 | 12 |  |  | 2022-12-13 | 2022-12-23 | 6.2d | 12.07d |  | Mireia Pires State; Desarrolladores; Alquiler del local; Equipos informáticos; Mobiliario de oficina | 175.5h |  | 14,372 | 13,034 |  |
| 24 | 1.3.1.2 | Interfaz tablet | 3w | 2023-02-28 | 2023-03-21 | 13 |  |  | 2022-12-21 | 2023-01-02 | 6.2d | 9.77d |  | Desarrolladores; Mireia Pires State; Alquiler del local; Equipos informáticos; Mobiliario de oficina | 172.5h |  | 14,980 | 13,034 |  |
| 25 | 1.3.1.3 | Interfaz web | 3w | 2023-02-28 | 2023-04-04 | 14 |  |  | 2022-12-21 | 2023-01-02 | 6.2d | 0d |  | Desarrolladores; Mireia Pires State; Alquiler del local; Equipos informáticos; Mobiliario de oficina | 130.25h |  | 13,829 | 13,034 |  |

| ID | WBS | Task | Duration | Start | Finish | Predecessors | Baseline start | Baseline finish | Baseline duration | Total slack | Resources | Work | Cost | Baseline cost |
| --- | --- | --- | --- | --- | --- | --- | --- | --- | --- | --- | --- | --- | --- | --- |
| 26 | 1.3.2 | **Capa lógica** | 17d | 2022-12-23 | 2023-01-17 |  | 2022-12-19 | 2023-01-10 | 16d | 54.67d |  | 192h | 26,964 | 26,580 |
| 27 | 1.3.2.1 | Implentar clases | 2w | 2022-12-23 | 2023-01-09 | 16, 17 | 2022-12-19 | 2023-01-10 | 12.6d | 60.67d | Desarrolladores; Mireia Pires State; Alquiler del local; Equipos informáticos; Mobiliario de oficina | 108h | 13,818 | 14,058 |
| 28 | 1.3.2.2 | Crear servidor web | 2w | 2022-12-23 | 2023-01-17 | 16, 17 | 2022-12-19 | 2022-12-23 | 3.07d | 54.67d | Desarrolladores; Mireia Pires State; Alquiler del local; Equipos informáticos; Mobiliario de oficina | 84h | 13,146 | 12,522 |
| 29 | 1.3.3 | **Capa persistencia** | 17d | 2022-12-30 | 2023-01-24 |  | 2022-12-19 | 2022-12-23 | 4d | 49.8d |  | 84h | 13,146 | 12,522 |
| 30 | 1.3.3.1 | Implementar base de datos | 2w | 2022-12-30 | 2023-01-24 | 19, 20 | 2022-12-19 | 2022-12-23 | 3.07d | 49.8d | Desarrolladores; Mireia Pires State; Alquiler del local; Equipos informáticos; Mobiliario de oficina | 84h | 13,146 | 12,522 |
| 31 | 1.3.4 | **Documentación** | 8.53d | 2023-04-04 | 2023-04-14 |  | 2023-01-02 | 2023-01-12 | 8.53d | 132.63d |  | 64h | 13,290 | 13,290 |
| 32 | 1.3.4.1 | Manuales | 8.53d | 2023-04-04 | 2023-04-14 | 23, 24, 25, 30 | 2023-01-02 | 2023-01-12 | 8.53d | 132.63d | Alquiler del local; Equipos informáticos; Iñaki Diez Lambies; Mobiliario de oficina | 64h | 13,290 | 13,290 |
| 33 | 1.4 | **Fase de Pruebas** | 12d | 2023-04-04 | 2023-04-20 |  | 2023-01-10 | 2023-01-26 | 12d | 0d |  | 233.75h | 63,687 | 63,378 |
| 34 | 1.4.1 | **Pruebas de integracion** | 12d | 2023-04-04 | 2023-04-20 |  | 2023-01-10 | 2023-01-26 | 12d | 0d |  | 153.75h | 26,377 | 26,068 |
| 35 | 1.4.1.1 | Casos de prueba iniciales | 9.2d | 2023-04-04 | 2023-04-20 | 23, 24, 25, 27, 28, 30 | 2023-01-10 | 2023-01-26 | 9.4d | 0d | Alquiler del local; Equipos informáticos; Iñaki Diez Lambies; Mobiliario de oficina; Testers | 96h | 13,546 | 13,546 |
| 36 | 1.4.1.2 | Informe de errores | 6.5d | 2023-04-04 | 2023-04-18 | 23, 24, 25, 27, 28, 30 | 2023-01-10 | 2023-01-16 | 3.07d | 1.3d | Alquiler del local; Equipos informáticos; Iñaki Diez Lambies; Mobiliario de oficina; Testers | 57.75h | 12,831 | 12,522 |
| 37 | 1.4.2 | **Pruebas de estrés** | 6d | 2023-04-04 | 2023-04-12 |  | 2023-01-10 | 2023-01-18 | 6d | 6d |  | 80h | 37,310 | 37,310 |
| 38 | 1.4.2.1 | Pruebas de servidores | 4.6d | 2023-04-04 | 2023-04-12 | 23, 24, 25, 27, 28, 30 | 2023-01-10 | 2023-01-18 | 4.6d | 6d | Alquiler del local; Equipos informáticos; Iñaki Diez Lambies; Mobiliario de oficina; Testers | 48h | 12,778 | 12,778 |
| 39 | 1.4.2.2 | Pruebas de seguridad | 1.53d | 2023-04-04 | 2023-04-06 | 23, 24, 25, 27, 28, 30 | 2023-01-10 | 2023-01-12 | 1.53d | 10d | Alquiler del local; Equipos informáticos; Iñaki Diez Lambies; Mobiliario de oficina; Testers | 16h | 12,266 | 12,266 |
| 40 | 1.4.2.3 | Pruebas de base de datos | 1.53d | 2023-04-04 | 2023-04-06 | 23, 24, 25, 27, 28, 30 | 2023-01-10 | 2023-01-12 | 1.53d | 10d | Alquiler del local; Equipos informáticos; Iñaki Diez Lambies; Mobiliario de oficina; Testers | 16h | 12,266 | 12,266 |
| 41 | 1.5 | **Despliegue** | 3.4d | 2023-04-20 | 2023-04-25 |  | 2023-01-26 | 2023-01-27 | 1d | 0d |  | 28.73h | 51,374.7 | 51,174 |
| 42 | 1.5.1 | **Desplegar base de datos** | 3.4d | 2023-04-20 | 2023-04-25 |  | 2023-01-26 | 2023-01-27 | 1d | 0d |  | 15h | 17,190 | 17,058 |
| 43 | 1.5.1.1 | Despliegue BD | 2d | 2023-04-20 | 2023-04-25 | 35, 36, 38, 39, 40 | 2023-01-26 | 2023-01-27 | 0.53d | 0d | Alquiler del local; Desarrolladores; Equipos informáticos; Mobiliario de oficina; Servidor | 15h | 17,190 | 17,058 |
| 44 | 1.5.2 | **Despliegue de servidores WEB** | 2.23d | 2023-04-20 | 2023-04-24 |  | 2023-01-26 | 2023-01-27 | 1d | 1.17d |  | 9.75h | 17,127 | 17,058 |
| 45 | 1.5.2.1 | Despliegue web | 1.3d | 2023-04-20 | 2023-04-24 | 35, 36, 38, 39, 40 | 2023-01-26 | 2023-01-27 | 0.53d | 1.17d | Alquiler del local; Desarrolladores; Equipos informáticos; Mobiliario de oficina; Servidor | 9.75h | 17,127 | 17,058 |
| 46 | 1.5.3 | **Aplicación final** | 1d | 2023-04-20 | 2023-04-21 |  | 2023-01-26 | 2023-01-27 | 1d | 2.4d |  | 3.98h | 17,057.7 | 17,058 |
| 47 | 1.5.3.1 | Despliegue aplicación | 0.53d | 2023-04-20 | 2023-04-21 | 35, 36, 38, 39, 40 | 2023-01-26 | 2023-01-27 | 0.53d | 2.4d | Alquiler del local; Desarrolladores; Equipos informáticos; Mobiliario de oficina; Servidor | 3.98h | 17,057.7 | 17,058 |
| 48 | 1.6 | **Mantenimiento** | 125.76d | 2023-04-25 | 2023-10-18 |  | 2023-01-27 | 2023-02-08 | 8d | 0d |  |  | 24,020 | 24,020 |
| 49 | 1.6.1 | **Evaluación de la implementación** | 125.76d | 2023-04-25 | 2023-10-18 |  | 2023-01-27 | 2023-02-08 | 8d | 0d |  |  | 24,020 | 24,020 |
| 50 | 1.6.1.1 | Encuesta a los usuarios | 0.02mo | 2023-04-25 | 2023-10-18 | 43, 45, 47 | 2023-01-27 | 2023-01-30 | 0.35d | 0d | Alquiler del local; Equipos informáticos; Mobiliario de oficina; Viajes [0.1%] |  | 12,010 | 12,010 |
| 51 | 1.6.1.2 | Interpretar resultados | 0.85w | 2023-04-25 | 2023-05-08 | 43, 45, 47 | 2023-01-27 | 2023-02-08 | 4.27d | 117.03d | Alquiler del local; Equipos informáticos; Mobiliario de oficina; Viajes [0.1%] |  | 12,010 | 12,010 |
